How a schedule from an exported table changed from version to version. A marks actual dates.

## Version 1 (saved 2026-11-10)

Note of the change: RASD 1.0, DD 0.1, modello Alloy e piano di progetto per l'aggiornamento del caricamento

| ID | Task | Start | Finish |
| --- | --- | --- | --- |
| D | Documents |  |  |
| D1 | RASD |  |  |
| D2 | Design document | 2026-11-16 | 2026-11-16 |
| D3 | Alloy model and its check | 2026-11-16 | 2026-11-17 |
| D4 | Project plan | 2026-11-17 | 2026-11-17 |
| M1 | Loading ledger |  |  |
| M1.1 | RequestGate as recording pass-through | 2026-11-17 | 2026-11-23 |
| M1.2 | LoadingLedger and its file | 2026-11-23 | 2026-11-27 |
| M1.3 | Report in diagnostics | 2026-11-27 | 2026-12-02 |
| M1.4 | Screen tokens on the main screens | 2026-12-02 | 2026-12-04 |
| M1.5 | Baseline run on the iPhone 12 Pro | 2026-12-04 | 2026-12-08 |
| M2 | Parts |  |  |
| M2.1 | Part type and Progress on Resource | 2026-12-08 | 2026-12-14 |
| M2.2 | Loader per part and PartStore | 2026-12-14 | 2026-12-24 |
| M2.3 | Query phases | 2026-12-24 | 2026-12-30 |
| M2.4 | Career as first user | 2026-12-30 | 2027-01-05 |
| M2.5 | Search sources in parallel | 2027-01-05 | 2027-01-07 |
| M2.6 | Integration tests with scripted transport | 2027-01-07 | 2027-01-14 |
| M3 | Section kit |  |  |
| M3.1 | arriving modifier and SectionStatus | 2027-01-14 | 2027-01-21 |
| M3.2 | RevealRenderer | 2027-01-21 | 2027-01-29 |
| M3.3 | ShapeMemory | 2027-01-29 | 2027-02-02 |
| M3.4 | Carriera Appelli Libretto | 2027-02-02 | 2027-02-08 |
| M3.5 | Oggi | 2027-02-08 | 2027-02-11 |
| M3.6 | UI tests and hitch measurement | 2027-02-11 | 2027-02-17 |
| M4 | Rooms |  |  |
| M4.1 | RelevanceOrder | 2027-02-17 | 2027-02-19 |
| M4.2 | Rooms assigned per batch and stable list | 2027-02-19 | 2027-02-25 |
| M4.3 | Map colours as rooms arrive | 2027-02-25 | 2027-03-02 |
| M4.4 | BoundaryClock | 2027-03-02 | 2027-03-08 |
| M4.5 | Tests and first-room measurement | 2027-03-08 | 2027-03-11 |
| M5 | Slow parts |  |  |
| M5.1 | DeadlinePolicy in the loader | 2027-03-11 | 2027-03-17 |
| M5.2 | Host breaker in RequestGate | 2027-03-17 | 2027-03-23 |
| M5.3 | Tests with a transport that never answers | 2027-03-23 | 2027-03-26 |
| M6 | Changes |  |  |
| M6.1 | ChangeDetector and changes on Query | 2027-03-26 | 2027-04-02 |
| M6.2 | NewMarks and the mark in the section kit | 2027-04-02 | 2027-04-08 |
| M6.3 | UpdateFeed as consumer and new notification kinds | 2027-04-08 | 2027-04-15 |
| M6.4 | Tests with fixtures | 2027-04-15 | 2027-04-20 |
| M7 | Prefetch |  |  |
| M7.1 | SpeculativeBudget and its settings page | 2027-04-20 | 2027-04-27 |
| M7.2 | Lanes in RequestGate | 2027-04-27 | 2027-05-03 |
| M7.3 | TimetablePrefetch and its two triggers | 2027-05-03 | 2027-05-10 |
| M7.4 | Tests and hit-rate check | 2027-05-10 | 2027-05-14 |
| M8 | Offline |  |  |
| M8.1 | OfflinePack and the processing task | 2027-05-14 | 2027-05-25 |
| M8.2 | Offline page in Impostazioni | 2027-05-25 | 2027-05-31 |
| M8.3 | Behaviour with no connection on every pack screen | 2027-05-31 | 2027-06-07 |
| M8.4 | Tests and storage measurement | 2027-06-07 | 2027-06-11 |
| A | Acceptance |  |  |
| A1 | Use cases played on the phone | 2027-06-11 | 2027-06-17 |
| A2 | Fixes from acceptance | 2027-06-17 | 2027-06-25 |

## Version 2 (saved 2026-11-10)

Note of the change: DD 0.2 e piano: una copia per chiave con l'età di ogni parte, M1 e M2 costruiti

Last finish 2027-06-25 → 2027-04-30 (-56d).

Changed:

| ID | Task | Start | Finish | Other |
| --- | --- | --- | --- | --- |
| M1.1 | RequestGate as recording pass-through | 2026-11-17 → none | 2026-11-23 → none |  |
| M1.2 | LoadingLedger and its file | 2026-11-23 → none | 2026-11-27 → none |  |
| M1.3 | Report in diagnostics | 2026-11-27 → none | 2026-12-02 → none |  |
| M1.4 | Screen tokens on the main screens | 2026-12-02 → none | 2026-12-04 → none |  |
| M1.5 | Baseline run on the iPhone 12 Pro | 2026-12-04 → 2026-11-17 (-17d) | 2026-12-08 → 2026-11-19 (-19d) |  |
| M2.1 | Part type and LoadProgress on Resource | 2026-12-08 → none | 2026-12-14 → none | was named Part type and Progress on Resource |
| M2.2 | Loader per part and stored part times | 2026-12-14 → none | 2026-12-24 → none | was named Loader per part and PartStore |
| M2.3 | Query phases | 2026-12-24 → none | 2026-12-30 → none |  |
| M2.4 | Career as first user | 2026-12-30 → none | 2027-01-05 → none |  |
| M2.5 | Search sources in parallel | 2027-01-05 → none | 2027-01-07 → none |  |
| M2.6 | Integration tests with scripted transport | 2027-01-07 → none | 2027-01-14 → none |  |
| M3.1 | arriving modifier and SectionStatus | 2027-01-14 → 2026-11-19 (-56d) | 2027-01-21 → 2026-11-26 (-56d) |  |
| M3.2 | RevealRenderer | 2027-01-21 → 2026-11-26 (-56d) | 2027-01-29 → 2026-12-04 (-56d) |  |
| M3.3 | ShapeMemory | 2027-01-29 → 2026-12-04 (-56d) | 2027-02-02 → 2026-12-08 (-56d) |  |
| M3.4 | Carriera Appelli Libretto | 2027-02-02 → 2026-12-08 (-56d) | 2027-02-08 → 2026-12-14 (-56d) |  |
| M3.5 | Oggi | 2027-02-08 → 2026-12-14 (-56d) | 2027-02-11 → 2026-12-17 (-56d) |  |
| M3.6 | UI tests and hitch measurement | 2027-02-11 → 2026-12-17 (-56d) | 2027-02-17 → 2026-12-23 (-56d) |  |
| M4.1 | RelevanceOrder | 2027-02-17 → 2026-12-23 (-56d) | 2027-02-19 → 2026-12-25 (-56d) |  |
| M4.2 | Rooms assigned per batch and stable list | 2027-02-19 → 2026-12-25 (-56d) | 2027-02-25 → 2026-12-31 (-56d) |  |
| M4.3 | Map colours as rooms arrive | 2027-02-25 → 2026-12-31 (-56d) | 2027-03-02 → 2027-01-05 (-56d) |  |
| M4.4 | BoundaryClock | 2027-03-02 → 2027-01-05 (-56d) | 2027-03-08 → 2027-01-11 (-56d) |  |
| M4.5 | Tests and first-room measurement | 2027-03-08 → 2027-01-11 (-56d) | 2027-03-11 → 2027-01-14 (-56d) |  |
| M5.1 | DeadlinePolicy in the loader | 2027-03-11 → 2027-01-14 (-56d) | 2027-03-17 → 2027-01-20 (-56d) |  |
| M5.2 | Host breaker in RequestGate | 2027-03-17 → 2027-01-20 (-56d) | 2027-03-23 → 2027-01-26 (-56d) |  |
| M5.3 | Tests with a transport that never answers | 2027-03-23 → 2027-01-26 (-56d) | 2027-03-26 → 2027-01-29 (-56d) |  |
| M6.1 | ChangeDetector and changes on Query | 2027-03-26 → 2027-01-29 (-56d) | 2027-04-02 → 2027-02-05 (-56d) |  |
| M6.2 | NewMarks and the mark in the section kit | 2027-04-02 → 2027-02-05 (-56d) | 2027-04-08 → 2027-02-11 (-56d) |  |
| M6.3 | UpdateFeed as consumer and new notification kinds | 2027-04-08 → 2027-02-11 (-56d) | 2027-04-15 → 2027-02-18 (-56d) |  |
| M6.4 | Tests with fixtures | 2027-04-15 → 2027-02-18 (-56d) | 2027-04-20 → 2027-02-23 (-56d) |  |
| M7.1 | SpeculativeBudget and its settings page | 2027-04-20 → 2027-02-23 (-56d) | 2027-04-27 → 2027-03-02 (-56d) |  |
| M7.2 | Lanes in RequestGate | 2027-04-27 → 2027-03-02 (-56d) | 2027-05-03 → 2027-03-08 (-56d) |  |
| M7.3 | TimetablePrefetch and its two triggers | 2027-05-03 → 2027-03-08 (-56d) | 2027-05-10 → 2027-03-15 (-56d) |  |
| M7.4 | Tests and hit-rate check | 2027-05-10 → 2027-03-15 (-56d) | 2027-05-14 → 2027-03-19 (-56d) |  |
| M8.1 | OfflinePack and the processing task | 2027-05-14 → 2027-03-19 (-56d) | 2027-05-25 → 2027-03-30 (-56d) |  |
| M8.2 | Offline page in Impostazioni | 2027-05-25 → 2027-03-30 (-56d) | 2027-05-31 → 2027-04-05 (-56d) |  |
| M8.3 | Behaviour with no connection on every pack screen | 2027-05-31 → 2027-04-05 (-56d) | 2027-06-07 → 2027-04-12 (-56d) |  |
| M8.4 | Tests and storage measurement | 2027-06-07 → 2027-04-12 (-56d) | 2027-06-11 → 2027-04-16 (-56d) |  |
| A1 | Use cases played on the phone | 2027-06-11 → 2027-04-16 (-56d) | 2027-06-17 → 2027-04-22 (-56d) |  |
| A2 | Fixes from acceptance | 2027-06-17 → 2027-04-22 (-56d) | 2027-06-25 → 2027-04-30 (-56d) |  |

## Version 3 (saved 2026-11-11)

Note of the change: Piano: M3 costruito, restano le misure sul telefono

Last finish 2027-04-30 → 2027-03-31 (-30d).

Changed:

| ID | Task | Start | Finish |
| --- | --- | --- | --- |
| M3.1 | arriving modifier and SectionStatus | 2026-11-19 → none | 2026-11-26 → none |
| M3.2 | RevealRenderer | 2026-11-26 → none | 2026-12-04 → none |
| M3.3 | ShapeMemory | 2026-12-04 → none | 2026-12-08 → none |
| M3.4 | Carriera Appelli Libretto | 2026-12-08 → none | 2026-12-14 → none |
| M3.5 | Oggi | 2026-12-14 → none | 2026-12-17 → none |
| M3.6 | UI tests and hitch measurement | 2026-12-17 → 2026-11-19 (-28d) | 2026-12-23 → 2026-11-23 (-30d) |
| M4.1 | RelevanceOrder | 2026-12-23 → 2026-11-23 (-30d) | 2026-12-25 → 2026-11-25 (-30d) |
| M4.2 | Rooms assigned per batch and stable list | 2026-12-25 → 2026-11-25 (-30d) | 2026-12-31 → 2026-12-01 (-30d) |
| M4.3 | Map colours as rooms arrive | 2026-12-31 → 2026-12-01 (-30d) | 2027-01-05 → 2026-12-04 (-32d) |
| M4.4 | BoundaryClock | 2027-01-05 → 2026-12-04 (-32d) | 2027-01-11 → 2026-12-10 (-32d) |
| M4.5 | Tests and first-room measurement | 2027-01-11 → 2026-12-10 (-32d) | 2027-01-14 → 2026-12-15 (-30d) |
| M5.1 | DeadlinePolicy in the loader | 2027-01-14 → 2026-12-15 (-30d) | 2027-01-20 → 2026-12-21 (-30d) |
| M5.2 | Host breaker in RequestGate | 2027-01-20 → 2026-12-21 (-30d) | 2027-01-26 → 2026-12-25 (-32d) |
| M5.3 | Tests with a transport that never answers | 2027-01-26 → 2026-12-25 (-32d) | 2027-01-29 → 2026-12-30 (-30d) |
| M6.1 | ChangeDetector and changes on Query | 2027-01-29 → 2026-12-30 (-30d) | 2027-02-05 → 2027-01-06 (-30d) |
| M6.2 | NewMarks and the mark in the section kit | 2027-02-05 → 2027-01-06 (-30d) | 2027-02-11 → 2027-01-12 (-30d) |
| M6.3 | UpdateFeed as consumer and new notification kinds | 2027-02-11 → 2027-01-12 (-30d) | 2027-02-18 → 2027-01-19 (-30d) |
| M6.4 | Tests with fixtures | 2027-02-18 → 2027-01-19 (-30d) | 2027-02-23 → 2027-01-22 (-32d) |
| M7.1 | SpeculativeBudget and its settings page | 2027-02-23 → 2027-01-22 (-32d) | 2027-03-02 → 2027-01-29 (-32d) |
| M7.2 | Lanes in RequestGate | 2027-03-02 → 2027-01-29 (-32d) | 2027-03-08 → 2027-02-04 (-32d) |
| M7.3 | TimetablePrefetch and its two triggers | 2027-03-08 → 2027-02-04 (-32d) | 2027-03-15 → 2027-02-11 (-32d) |
| M7.4 | Tests and hit-rate check | 2027-03-15 → 2027-02-11 (-32d) | 2027-03-19 → 2027-02-17 (-30d) |
| M8.1 | OfflinePack and the processing task | 2027-03-19 → 2027-02-17 (-30d) | 2027-03-30 → 2027-02-26 (-32d) |
| M8.2 | Offline page in Impostazioni | 2027-03-30 → 2027-02-26 (-32d) | 2027-04-05 → 2027-03-04 (-32d) |
| M8.3 | Behaviour with no connection on every pack screen | 2027-04-05 → 2027-03-04 (-32d) | 2027-04-12 → 2027-03-11 (-32d) |
| M8.4 | Tests and storage measurement | 2027-04-12 → 2027-03-11 (-32d) | 2027-04-16 → 2027-03-17 (-30d) |
| A1 | Use cases played on the phone | 2027-04-16 → 2027-03-17 (-30d) | 2027-04-22 → 2027-03-23 (-30d) |
| A2 | Fixes from acceptance | 2027-04-22 → 2027-03-23 (-30d) | 2027-04-30 → 2027-03-31 (-30d) |

## Version 4 (saved 2026-11-11)

Note of the change: DD 0.4 e piano: M4 costruito, resta la misura della prima aula sul telefono

Last finish 2027-03-31 → 2027-03-11 (-20d).

Changed:

| ID | Task | Start | Finish |
| --- | --- | --- | --- |
| M4.1 | RelevanceOrder | 2026-11-23 → none | 2026-11-25 → none |
| M4.2 | Rooms assigned per batch and stable list | 2026-11-25 → none | 2026-12-01 → none |
| M4.3 | Map colours as rooms arrive | 2026-12-01 → none | 2026-12-04 → none |
| M4.4 | BoundaryClock | 2026-12-04 → none | 2026-12-10 → none |
| M4.5 | Tests and first-room measurement | 2026-12-10 → 2026-11-23 (-17d) | 2026-12-15 → 2026-11-25 (-20d) |
| M5.1 | DeadlinePolicy in the loader | 2026-12-15 → 2026-11-25 (-20d) | 2026-12-21 → 2026-12-01 (-20d) |
| M5.2 | Host breaker in RequestGate | 2026-12-21 → 2026-12-01 (-20d) | 2026-12-25 → 2026-12-07 (-18d) |
| M5.3 | Tests with a transport that never answers | 2026-12-25 → 2026-12-07 (-18d) | 2026-12-30 → 2026-12-10 (-20d) |
| M6.1 | ChangeDetector and changes on Query | 2026-12-30 → 2026-12-10 (-20d) | 2027-01-06 → 2026-12-17 (-20d) |
| M6.2 | NewMarks and the mark in the section kit | 2027-01-06 → 2026-12-17 (-20d) | 2027-01-12 → 2026-12-23 (-20d) |
| M6.3 | UpdateFeed as consumer and new notification kinds | 2027-01-12 → 2026-12-23 (-20d) | 2027-01-19 → 2026-12-30 (-20d) |
| M6.4 | Tests with fixtures | 2027-01-19 → 2026-12-30 (-20d) | 2027-01-22 → 2027-01-04 (-18d) |
| M7.1 | SpeculativeBudget and its settings page | 2027-01-22 → 2027-01-04 (-18d) | 2027-01-29 → 2027-01-11 (-18d) |
| M7.2 | Lanes in RequestGate | 2027-01-29 → 2027-01-11 (-18d) | 2027-02-04 → 2027-01-15 (-20d) |
| M7.3 | TimetablePrefetch and its two triggers | 2027-02-04 → 2027-01-15 (-20d) | 2027-02-11 → 2027-01-22 (-20d) |
| M7.4 | Tests and hit-rate check | 2027-02-11 → 2027-01-22 (-20d) | 2027-02-17 → 2027-01-28 (-20d) |
| M8.1 | OfflinePack and the processing task | 2027-02-17 → 2027-01-28 (-20d) | 2027-02-26 → 2027-02-08 (-18d) |
| M8.2 | Offline page in Impostazioni | 2027-02-26 → 2027-02-08 (-18d) | 2027-03-04 → 2027-02-12 (-20d) |
| M8.3 | Behaviour with no connection on every pack screen | 2027-03-04 → 2027-02-12 (-20d) | 2027-03-11 → 2027-02-19 (-20d) |
| M8.4 | Tests and storage measurement | 2027-03-11 → 2027-02-19 (-20d) | 2027-03-17 → 2027-02-25 (-20d) |
| A1 | Use cases played on the phone | 2027-03-17 → 2027-02-25 (-20d) | 2027-03-23 → 2027-03-03 (-20d) |
| A2 | Fixes from acceptance | 2027-03-23 → 2027-03-03 (-20d) | 2027-03-31 → 2027-03-11 (-20d) |

## Version 5 (saved 2026-11-11)

Note of the change: DD 0.5 e piano: M5 costruito, la scadenza è applicata da Query e la pausa vale solo per le letture

Last finish 2027-03-11 → 2027-02-24 (-15d).

Changed:

| ID | Task | Start | Finish | Other |
| --- | --- | --- | --- | --- |
| M5.1 | DeadlinePolicy and the late phase | 2026-11-25 → none | 2026-12-01 → none | was named DeadlinePolicy in the loader |
| M5.2 | Host breaker in RequestGate | 2026-12-01 → none | 2026-12-07 → none |  |
| M5.3 | Tests with a transport that never answers | 2026-12-07 → none | 2026-12-10 → none |  |
| M6.1 | ChangeDetector and changes on Query | 2026-12-10 → 2026-11-25 (-15d) | 2026-12-17 → 2026-12-02 (-15d) |  |
| M6.2 | NewMarks and the mark in the section kit | 2026-12-17 → 2026-12-02 (-15d) | 2026-12-23 → 2026-12-08 (-15d) |  |
| M6.3 | UpdateFeed as consumer and new notification kinds | 2026-12-23 → 2026-12-08 (-15d) | 2026-12-30 → 2026-12-15 (-15d) |  |
| M6.4 | Tests with fixtures | 2026-12-30 → 2026-12-15 (-15d) | 2027-01-04 → 2026-12-18 (-17d) |  |
| M7.1 | SpeculativeBudget and its settings page | 2027-01-04 → 2026-12-18 (-17d) | 2027-01-11 → 2026-12-25 (-17d) |  |
| M7.2 | Lanes in RequestGate | 2027-01-11 → 2026-12-25 (-17d) | 2027-01-15 → 2026-12-31 (-15d) |  |
| M7.3 | TimetablePrefetch and its two triggers | 2027-01-15 → 2026-12-31 (-15d) | 2027-01-22 → 2027-01-07 (-15d) |  |
| M7.4 | Tests and hit-rate check | 2027-01-22 → 2027-01-07 (-15d) | 2027-01-28 → 2027-01-13 (-15d) |  |
| M8.1 | OfflinePack and the processing task | 2027-01-28 → 2027-01-13 (-15d) | 2027-02-08 → 2027-01-22 (-17d) |  |
| M8.2 | Offline page in Impostazioni | 2027-02-08 → 2027-01-22 (-17d) | 2027-02-12 → 2027-01-28 (-15d) |  |
| M8.3 | Behaviour with no connection on every pack screen | 2027-02-12 → 2027-01-28 (-15d) | 2027-02-19 → 2027-02-04 (-15d) |  |
| M8.4 | Tests and storage measurement | 2027-02-19 → 2027-02-04 (-15d) | 2027-02-25 → 2027-02-10 (-15d) |  |
| A1 | Use cases played on the phone | 2027-02-25 → 2027-02-10 (-15d) | 2027-03-03 → 2027-02-16 (-15d) |  |
| A2 | Fixes from acceptance | 2027-03-03 → 2027-02-16 (-15d) | 2027-03-11 → 2027-02-24 (-15d) |  |

## Version 6 (saved 2026-11-11)

Note of the change: DD 0.6 e piano: M6 costruito, il rilevatore degli esami resta accanto a quello generico

Last finish 2027-02-24 → 2027-02-01 (-23d).

Changed:

| ID | Task | Start | Finish | Other |
| --- | --- | --- | --- | --- |
| M6.1 | ChangeDetector and changes on Query | 2026-11-25 → none | 2026-12-02 → none |  |
| M6.2 | NewMarks and the mark in the section kit | 2026-12-02 → none | 2026-12-08 → none |  |
| M6.3 | Lecture moves into UpdateFeed and the new notification kind | 2026-12-08 → none | 2026-12-15 → none | was named UpdateFeed as consumer and new notification kinds |
| M6.4 | Tests with fixtures | 2026-12-15 → none | 2026-12-18 → none |  |
| M7.1 | SpeculativeBudget and its settings page | 2026-12-18 → 2026-11-25 (-23d) | 2026-12-25 → 2026-12-02 (-23d) |  |
| M7.2 | Lanes in RequestGate | 2026-12-25 → 2026-12-02 (-23d) | 2026-12-31 → 2026-12-08 (-23d) |  |
| M7.3 | TimetablePrefetch and its two triggers | 2026-12-31 → 2026-12-08 (-23d) | 2027-01-07 → 2026-12-15 (-23d) |  |
| M7.4 | Tests and hit-rate check | 2027-01-07 → 2026-12-15 (-23d) | 2027-01-13 → 2026-12-21 (-23d) |  |
| M8.1 | OfflinePack and the processing task | 2027-01-13 → 2026-12-21 (-23d) | 2027-01-22 → 2026-12-30 (-23d) |  |
| M8.2 | Offline page in Impostazioni | 2027-01-22 → 2026-12-30 (-23d) | 2027-01-28 → 2027-01-05 (-23d) |  |
| M8.3 | Behaviour with no connection on every pack screen | 2027-01-28 → 2027-01-05 (-23d) | 2027-02-04 → 2027-01-12 (-23d) |  |
| M8.4 | Tests and storage measurement | 2027-02-04 → 2027-01-12 (-23d) | 2027-02-10 → 2027-01-18 (-23d) |  |
| A1 | Use cases played on the phone | 2027-02-10 → 2027-01-18 (-23d) | 2027-02-16 → 2027-01-22 (-25d) |  |
| A2 | Fixes from acceptance | 2027-02-16 → 2027-01-22 (-25d) | 2027-02-24 → 2027-02-01 (-23d) |  |

## Version 7 (saved 2026-11-11)

Note of the change: Merge pull request #28 from samuelesegrini/feature/local-builds-and-release-controls

Last finish 2027-02-01 → 2027-01-08 (-24d).

Changed:

| ID | Task | Start | Finish | Other |
| --- | --- | --- | --- | --- |
| M7.1 | SpeculativeBudget and its settings section | 2026-11-25 → none | 2026-12-02 → none | was named SpeculativeBudget and its settings page |
| M7.2 | Lanes in RequestGate | 2026-12-02 → none | 2026-12-08 → none |  |
| M7.3 | TimetablePrefetch and its two triggers | 2026-12-08 → none | 2026-12-15 → none |  |
| M7.4 | Tests and hit-rate check | 2026-12-15 → 2026-11-25 (-20d) | 2026-12-21 → 2026-11-27 (-24d) |  |
| M8.1 | OfflinePack and the processing task | 2026-12-21 → 2026-11-27 (-24d) | 2026-12-30 → 2026-12-08 (-22d) |  |
| M8.2 | Offline page in Impostazioni | 2026-12-30 → 2026-12-08 (-22d) | 2027-01-05 → 2026-12-14 (-22d) |  |
| M8.3 | Behaviour with no connection on every pack screen | 2027-01-05 → 2026-12-14 (-22d) | 2027-01-12 → 2026-12-21 (-22d) |  |
| M8.4 | Tests and storage measurement | 2027-01-12 → 2026-12-21 (-22d) | 2027-01-18 → 2026-12-25 (-24d) |  |
| A1 | Use cases played on the phone | 2027-01-18 → 2026-12-25 (-24d) | 2027-01-22 → 2026-12-31 (-22d) |  |
| A2 | Fixes from acceptance | 2027-01-22 → 2026-12-31 (-22d) | 2027-02-01 → 2027-01-08 (-24d) |  |

## Version 8 (saved 2026-11-12)

Note of the change: DD 0.8 e piano: M8 scritto, il pacchetto offline in quattro elementi; il syllabus resta fuori

Last finish 2027-01-08 → 2026-12-17 (-22d).

Changed:

| ID | Task | Start | Finish |
| --- | --- | --- | --- |
| M8.1 | OfflinePack and the processing task | 2026-11-27 → none | 2026-12-08 → none |
| M8.2 | Offline page in Impostazioni | 2026-12-08 → none | 2026-12-14 → none |
| M8.3 | Behaviour with no connection on every pack screen | 2026-12-14 → 2026-11-27 (-17d) | 2026-12-21 → 2026-12-01 (-20d) |
| M8.4 | Tests and storage measurement | 2026-12-21 → 2026-12-01 (-20d) | 2026-12-25 → 2026-12-03 (-22d) |
| A1 | Use cases played on the phone | 2026-12-25 → 2026-12-03 (-22d) | 2026-12-31 → 2026-12-09 (-22d) |
| A2 | Fixes from acceptance | 2026-12-31 → 2026-12-09 (-22d) | 2027-01-08 → 2026-12-17 (-22d) |
